# Разработка карты города

Schedule from MS Project, 2022-03-01 to 2022-07-15, status date 2022-05-10, costs in ₽, A marks actual dates.
Команда разработчиков из 16 человек занимается созданием карты города на основе собственного модуля отображения. Проект должен быть завершен в течение 6 месяцев. Бюджет проекта: 50 000 рублей.

## Calendars

- Стандартный: Mon-Fri 09:00-13:00, 14:00-18:00; Sat-Sun off. Exceptions (off unless hours are given): 2022-03-05 09:00-13:00, 14:00-18:00 (Рабочий день 5 марта), 2022-03-06 to 2022-03-08 (Международный женский день), 2022-04-30 to 2022-05-03 (Праздник Весны и Труда), 2022-05-07 to 2022-05-10 (День Победы), 2022-06-11 to 2022-06-13 (День России).

## Resources

| Resource | Group | Rate | Cost per use |
| --- | --- | --- | --- |
| Ведущий программист | Программирование | 10 | 100 |
| Программист №4 | Программирование | 7 | 50 |
| Программист №3 | Программирование | 7 | 50 |
| Программист №2 | Программирование | 7 | 50 |
| Программист №1 | Программирование | 7 | 50 |
| Системный аналитик | Анализ | 20 | 300 |
| Художник-дизайнер | Дизайн | 8 | 70 |
| Технический писатель | Документация | 5 | 20 |
| Web-дизайнер | Internet | 7 | 50 |
| 3D аниматор | Дизайн | 8 | 70 |
| Мультимедиа-корреспондент | М-медиа | 3 | 20 |
| Наборщик данных №5 | Ввод данных | 2 | 10 |
| Наборщик данных №4 | Ввод данных | 2 | 10 |
| Наборщик данных №3 | Ввод данных | 2 | 10 |
| Наборщик данных №2 | Ввод данных | 2 | 10 |
| Наборщик данных №1 | Ввод данных | 2 | 10 |
| Сервер |  | 2.2 |  |

## Schedule

| ID | WBS | Task | Type | Duration | Start | Finish | Predecessors | Complete | Remaining | Baseline start | Baseline finish | Baseline duration | Total slack | Free slack | Resources | Work | Actual work | Cost | Baseline cost | Actual cost |
| --- | --- | --- | --- | --- | --- | --- | --- | --- | --- | --- | --- | --- | --- | --- | --- | --- | --- | --- | --- | --- |
| 1 | 1 | Начало работы | milestone | 0d | 2022-03-01 09:00 A | 2022-03-01 09:00 A |  | 100% |  | 2022-03-01 09:00 | 2022-03-01 09:00 | 0d |  |  |  |  |  |  |  |  |
| 2 | 2 | **Создание интерфейса** |  | 67.53d | 2022-03-01 09:00 A | 2022-06-09 14:12 | 1 | 85% | 9.93d | 2022-03-01 09:00 | 2022-06-09 14:12 | 67.53d | 0d |  |  | 560h | 320h | 5,650 | 5,650 | 3,620 |
| 3 | 2.1 | **Разработка дизайна интерфейса** |  | 25.75d | 2022-03-01 09:00 A | 2022-04-06 16:00 A |  | 100% |  | 2022-03-01 09:00 | 2022-04-06 16:00 | 25.75d |  |  |  | 320h | 320h | 2,770 | 2,770 | 2,770 |
| 4 | 2.1.1 | Разработка 2D графических элементов |  | 3.7w | 2022-03-01 09:00 A | 2022-03-28 18:00 A |  | 100% |  | 2022-03-01 09:00 | 2022-03-23 13:00 | 3w |  |  | Художник-дизайнер | 120h | 120h | 1,030 | 1,030 | 1,030 |
| 5 | 2.1.2 | Разработка 3D графических элементов |  | 2w | 2022-03-01 09:00 A | 2022-03-16 12:00 A | 4SS | 100% |  | 2022-03-01 09:00 | 2022-03-16 12:00 | 2w |  |  | 3D аниматор | 80h | 80h | 710 | 710 | 710 |
| 6 | 2.1.3 | Создание заставки |  | 3w | 2022-03-16 12:00 A | 2022-04-06 16:00 A | 5 | 100% |  | 2022-03-16 12:00 | 2022-04-06 16:00 | 3w |  |  | 3D аниматор | 120h | 120h | 1,030 | 1,030 | 1,030 |
| 7 | 2.2 | Программирование интерфейса |  | 1.5w | 2022-05-31 09:12 | 2022-06-09 14:12 | 3, 12 |  |  | 2022-05-31 09:12 | 2022-06-09 14:12 | 1.5w | 0d |  | Программист №3; Программист №4; Программист №1; Программист №2 | 240h |  | 1,880 | 1,880 |  |
| 8 | 3 | **Построение базы объектов** |  | 82.6d | 2022-03-11 16:00 A | 2022-07-13 11:49 |  | 46% | 44.49d | 2022-03-11 16:00 | 2022-07-13 11:49 | 82.6d | 2.61d |  | Сервер | 5691.82h | 2317.2h | 16,068.6 | 15,573.64 | 8,459.26 |
| 9 | 3.1 | Анализ и построение структуры базы объектов |  | 2w | 2022-03-11 16:00 A | 2022-03-25 18:00 A |  | 100% |  | 2022-03-11 16:00 | 2022-03-25 18:00 | 2w |  |  | Системный аналитик | 80h | 80h | 1,900 | 1,900 | 1,900 |
| 10 | 3.2 | Программирование средств обработки базы объектов |  | 2.47w | 2022-03-28 09:00 A | 2022-04-13 11:49 A | 9 | 100% |  | 2022-03-28 09:00 | 2022-04-13 11:49 | 2.47w |  |  | Программист №3; Программист №4; Программист №1; Программист №2 | 240h | 240h | 1,880 | 1,880 | 1,880 |
| 11 | 3.3 | Наполнение базы объектов |  | 12w | 2022-04-13 11:49 A | 2022-07-13 11:49 | 10 | 26% | 8.87w | 2022-04-13 11:49 | 2022-07-13 11:49 | 12w | 2.61d |  | Наборщик данных №1; Наборщик данных №2; Наборщик данных №3; Наборщик данных №4; Наборщик данных №5 | 2400h | 625.91h | 4,850 | 4,850 | 1,301.82 |
| 12 | 4 | **Создание ядра GIS** |  | 60.03d | 2022-03-01 09:00 A | 2022-05-31 09:12 |  | 76% | 14.11d | 2022-03-01 09:00 | 2022-05-31 09:12 | 60.03d | 0d |  |  | 1880h | 1477.37h | 17,218.62 | 17,218.62 | 13,988.56 |
| 13 | 4.1 | Анализ и проектирование ядра |  | 1.5w | 2022-03-01 09:00 A | 2022-03-11 16:00 A |  | 100% |  | 2022-03-01 09:00 | 2022-03-11 16:00 | 1.5w |  |  | Ведущий программист; Системный аналитик; Программист №1; Программист №2 | 240h | 240h | 3,140 | 3,140 | 3,140 |
| 14 | 4.2 | Создание модели ядра |  | 2.02w | 2022-03-11 16:00 A | 2022-03-25 16:49 A | 13 | 100% |  | 2022-03-11 16:00 | 2022-03-25 16:49 | 2.02w |  |  | Ведущий программист; Программист №1; Программист №2; Программист №3; Программист №4 | 400h | 400h | 3,336.46 | 3,336.46 | 3,336.46 |
| 15 | 4.3 | Тестирование модели ядра |  | 1w | 2022-03-25 16:49 A | 2022-04-01 16:49 A | 14 | 100% |  | 2022-03-25 16:49 | 2022-04-01 16:49 | 1w |  |  | Программист №1 | 40h | 40h | 330 | 330 | 330 |
| 16 | 4.4 | Создание рабочей версии ядра |  | 7.41w | 2022-04-01 16:49 A | 2022-05-31 09:12 | 15 | 62% | 2.81w | 2022-04-01 16:49 | 2022-05-31 09:12 | 7.41w | 0d |  | Ведущий программист; Программист №1; Программист №2; Программист №3; Программист №4 | 1200h | 797.36h | 9,412.16 | 9,412.16 | 6,422.1 |
| 17 | 5 | Создание мультимедиа-наполнения |  | 6w | 2022-03-09 09:00 A | 2022-06-23 11:00 | 3 | 13% | 5.2w | 2022-04-06 16:00 | 2022-05-25 15:00 | 6w | 16.71d | 17.96d | Мультимедиа-корреспондент | 264h | 32h | 812 | 740 | 116 |
| 18 | 6 | Создание справочной системы |  | 2w | 2022-06-21 14:12 | 2022-07-05 14:12 | 7 |  |  | 2022-06-21 17:12 | 2022-07-06 11:12 | 2w | 8.44d | 13.19d | Технический писатель | 80h |  | 420 | 420 |  |
| 19 | 7 | **Создание руководства пользователя** |  | 17d | 2022-05-26 14:12 | 2022-06-21 14:12 | 7FS-10d |  |  | 2022-05-26 14:12 | 2022-06-21 17:12 | 17.38d | 0d |  |  | 160h |  | 1,010 | 1,010 |  |
| 20 | 7.1 | Разработка дизайна руководства |  | 1w | 2022-05-26 14:12 | 2022-06-02 14:12 |  |  |  | 2022-05-26 14:12 | 2022-06-02 15:12 | 1w | 0d |  | Художник-дизайнер | 40h |  | 390 | 390 |  |
| 21 | 7.2 | Написание руководства пользователя |  | 3w | 2022-05-30 14:12 | 2022-06-21 14:12 | 20SS+2d |  |  | 2022-05-30 14:12 | 2022-06-21 17:12 | 3w | 0d |  | Технический писатель | 120h |  | 620 | 620 |  |
| 22 | 8 | **Создание web-сайта и поддержка** |  | 33.44d | 2022-05-30 14:12 | 2022-07-15 17:41 |  |  |  | 2022-05-30 14:12 | 2022-07-18 11:41 | 33.81d | 0d |  |  | 728h |  | 5,666 | 5,666 |  |
| 23 | 8.1 | Разработка структуры сайта |  | 1d | 2022-05-30 14:12 | 2022-05-31 14:12 | 21SS |  |  | 2022-05-30 14:12 | 2022-05-31 14:12 | 1d | 0d |  | Web-дизайнер | 8h |  | 106 | 106 |  |
| 24 | 8.2 | Разработка дизайна сайта |  | 1.4w | 2022-05-31 14:12 | 2022-06-09 14:12 | 23 |  |  | 2022-05-31 14:12 | 2022-06-09 16:12 | 1.4w | 0d |  | 3D аниматор; Web-дизайнер; Художник-дизайнер | 120h |  | 1,110 | 1,110 |  |
| 25 | 8.3 | Наполнение сайта |  | 3w | 2022-06-09 14:12 | 2022-07-01 16:12 | 24 |  |  | 2022-06-09 16:12 | 2022-07-04 10:12 | 3w | 0d |  | Web-дизайнер | 120h |  | 890 | 890 |  |
| 26 | 8.4 | Тестирование сайта |  | 3.04w | 2022-06-24 16:12 | 2022-07-15 17:41 | 25FS-1w |  |  | 2022-06-27 10:12 | 2022-07-18 11:41 | 3.04w | 0d |  | Программист №1; Программист №2; Программист №3; Программист №4 | 480h |  | 3,560 | 3,560 |  |
| 27 | 9 | Сдача в эксплуатацию | milestone | 0d | 2022-07-15 17:41 | 2022-07-15 17:41 | 26 |  |  | 2022-07-18 11:41 | 2022-07-18 11:41 | 0d | 0d |  |  |  |  |  |  |  |

| ID | WBS | Task | Type | Duration | Start | Finish | Complete | Remaining | Baseline start | Baseline finish | Baseline duration | Total slack | Constraint | Resources | Work | Actual work | Cost | Baseline cost | Actual cost |
| --- | --- | --- | --- | --- | --- | --- | --- | --- | --- | --- | --- | --- | --- | --- | --- | --- | --- | --- | --- |
| 28 | 10 | **Совещание** |  | 19.12d | 2022-03-02 09:00 A | 2022-03-30 10:00 A | 100% |  | 2022-03-02 09:00 | 2022-07-20 10:00 | 94.12d |  |  |  | 35h | 35h | 305 | 1,281 | 305 |
| 29 | 10.1 | Совещание 1 | manual | 1h | 2022-03-02 09:00 A | 2022-03-02 10:00 A | 100% |  | 2022-03-02 09:00 | 2022-03-02 10:00 | 1h |  | start no earlier than 2022-03-02 09:00 | 3D аниматор; Ведущий программист; Web-дизайнер; Мультимедиа-корреспондент; Системный аналитик; Художник-дизайнер; Технический писатель | 7h | 7h | 61 | 61 | 61 |
| 30 | 10.2 | Совещание 2 | manual | 1h | 2022-03-09 09:00 A | 2022-03-09 10:00 A | 100% |  | 2022-03-09 09:00 | 2022-03-09 10:00 | 1h |  | start no earlier than 2022-03-09 09:00 | 3D аниматор; Ведущий программист; Web-дизайнер; Мультимедиа-корреспондент; Системный аналитик; Художник-дизайнер; Технический писатель | 7h | 7h | 61 | 61 | 61 |
| 31 | 10.3 | Совещание 3 | manual | 1h | 2022-03-16 09:00 A | 2022-03-16 10:00 A | 100% |  | 2022-03-16 09:00 | 2022-03-16 10:00 | 1h |  | start no earlier than 2022-03-16 09:00 | 3D аниматор; Ведущий программист; Web-дизайнер; Мультимедиа-корреспондент; Системный аналитик; Художник-дизайнер; Технический писатель | 7h | 7h | 61 | 61 | 61 |
| 32 | 10.4 | Совещание 4 | manual | 1h | 2022-03-23 09:00 A | 2022-03-23 10:00 A | 100% |  | 2022-03-23 09:00 | 2022-03-23 10:00 | 1h |  | start no earlier than 2022-03-23 09:00 | 3D аниматор; Ведущий программист; Web-дизайнер; Мультимедиа-корреспондент; Системный аналитик; Художник-дизайнер; Технический писатель | 7h | 7h | 61 | 61 | 61 |
| 33 | 10.5 | Совещание 5 | manual | 1h | 2022-03-30 09:00 A | 2022-03-30 10:00 A | 100% |  | 2022-03-30 09:00 | 2022-03-30 10:00 | 1h |  | start no earlier than 2022-03-30 09:00 | 3D аниматор; Ведущий программист; Web-дизайнер; Мультимедиа-корреспондент; Системный аналитик; Художник-дизайнер; Технический писатель | 7h | 7h | 61 | 61 | 61 |
| 34 | 11 | **Презентация** |  | 65.25d | 2022-04-04 09:00 A | 2022-07-11 11:00 | 43% | 37.29d |  |  |  | 0d |  |  | 56h | 24h | 1,984 |  | 848 |
| 35 | 11.1 | Презентация 1 | manual | 2h | 2022-04-04 09:00 A | 2022-04-04 11:00 A | 100% |  |  |  |  |  | start no earlier than 2022-04-04 09:00 | Web-дизайнер; Ведущий программист; Мультимедиа-корреспондент; Системный аналитик | 8h | 8h | 280 |  | 280 |
| 36 | 11.2 | Презентация 2 | manual | 2h | 2022-04-18 09:00 A | 2022-04-18 11:00 A | 100% |  |  |  |  |  | start no earlier than 2022-04-18 09:00 | Web-дизайнер; Ведущий программист; Мультимедиа-корреспондент; Системный аналитик | 8h | 8h | 284 |  | 284 |
| 37 | 11.3 | Презентация 3 | manual | 2h | 2022-05-02 09:00 A | 2022-05-02 11:00 A | 100% |  |  |  |  |  | start no earlier than 2022-05-02 09:00 | Web-дизайнер; Ведущий программист; Мультимедиа-корреспондент; Системный аналитик | 8h | 8h | 284 |  | 284 |
| 38 | 11.4 | Презентация 4 | manual | 2h | 2022-05-16 09:00 | 2022-05-16 11:00 |  |  |  |  |  |  | start no earlier than 2022-05-16 09:00 | Web-дизайнер; Ведущий программист; Мультимедиа-корреспондент; Системный аналитик | 8h |  | 284 |  |  |
| 39 | 11.5 | Презентация 5 | manual | 2h | 2022-05-30 09:00 | 2022-05-30 11:00 |  |  |  |  |  |  | start no earlier than 2022-05-30 09:00 | Web-дизайнер; Ведущий программист; Мультимедиа-корреспондент; Системный аналитик | 8h |  | 284 |  |  |
| 40 | 11.6 | Презентация 7 | manual | 2h | 2022-06-27 09:00 | 2022-06-27 11:00 |  |  |  |  |  |  | start no earlier than 2022-06-27 09:00 | Web-дизайнер; Ведущий программист; Мультимедиа-корреспондент; Системный аналитик | 8h |  | 284 |  |  |
| 41 | 11.7 | Презентация 8 | manual | 2h | 2022-07-11 09:00 | 2022-07-11 11:00 |  |  |  |  |  |  | start no earlier than 2022-07-11 09:00 | Web-дизайнер; Ведущий программист; Мультимедиа-корреспондент; Системный аналитик | 8h |  | 284 |  |  |
