# Разработка карты города

Schedule from MS Project, 2022-03-01 to 2022-07-13, status date 2022-05-10, costs in ₽, A marks actual dates.
Команда разработчиков из 16 человек занимается созданием карты города на основе собственного модуля отображения. Проект должен быть завершен в течение 6 месяцев. Бюджет проекта: 50 000 рублей.

## Calendars

- Стандартный: Mon-Fri 09:00-13:00, 14:00-18:00; Sat-Sun off. Exceptions (off unless hours are given): 2022-03-05 09:00-13:00, 14:00-18:00 (Рабочий день 5 марта), 2022-03-06 to 2022-03-08 (Международный женский день), 2022-04-30 to 2022-05-03 (Праздник Весны и Труда), 2022-05-07 to 2022-05-10 (День Победы), 2022-06-11 to 2022-06-13 (День России).

## Resources

| Resource | Group | Rate | Cost per use |
| --- | --- | --- | --- |
| Ведущий программист | Программирование | 10 | 100 |
| Программист №4 | Программирование | 7 | 50 |
| Программист №3 | Программирование | 7 | 50 |
| Программист №2 | Программирование | 7 | 50 |
| Программист №1 | Программирование | 7 | 50 |
| Системный аналитик | Анализ | 20 | 300 |
| Художник-дизайнер | Дизайн | 8 | 70 |
| Технический писатель | Документация | 5 | 20 |
| Web-дизайнер | Internet | 7 | 50 |
| 3D аниматор | Дизайн | 8 | 70 |
| Мультимедиа-корреспондент | М-медиа | 3 | 20 |
| Наборщик данных №5 | Ввод данных | 2 | 10 |
| Наборщик данных №4 | Ввод данных | 2 | 10 |
| Наборщик данных №3 | Ввод данных | 2 | 10 |
| Наборщик данных №2 | Ввод данных | 2 | 10 |
| Наборщик данных №1 | Ввод данных | 2 | 10 |
| Сервер |  | 2.2 |  |

## Schedule

| ID | WBS | Task | Type | Duration | Start | Finish | Predecessors | Complete | Remaining | Baseline start | Baseline finish | Baseline duration | Total slack | Free slack | Resources | Work | Actual work | Cost | Baseline cost | Actual cost |
| --- | --- | --- | --- | --- | --- | --- | --- | --- | --- | --- | --- | --- | --- | --- | --- | --- | --- | --- | --- | --- |
| 1 | 1 | Начало работы | milestone | 0d | 2022-03-01 09:00 A | 2022-03-01 09:00 A |  | 100% |  | 2022-03-01 09:00 | 2022-03-01 09:00 | 0d |  |  |  |  |  |  |  |  |
| 2 | 2 | **Дизайн** |  | 30.62d | 2022-03-01 09:00 A | 2022-04-13 15:00 | 1 | 71% | 8.73d | 2022-03-01 09:00 | 2022-06-09 14:12 | 67.53d | 21.89d |  |  | 480h | 320h | 5,270 | 5,650 | 3,480 |
| 3 | 2.1 | **Разработка дизайна интерфейса** |  | 25.75d | 2022-03-01 09:00 A | 2022-04-06 16:00 A |  | 100% |  | 2022-03-01 09:00 | 2022-04-06 16:00 | 25.75d |  |  |  | 320h | 320h | 2,770 | 2,770 | 2,770 |
| 4 | 2.1.1 | Разработка 2D графических элементов |  | 3.7w | 2022-03-01 09:00 A | 2022-03-28 18:00 A |  | 100% |  | 2022-03-01 09:00 | 2022-03-23 13:00 | 3w |  |  | Художник-дизайнер | 120h | 120h | 1,030 | 1,030 | 1,030 |
| 5 | 2.1.2 | Разработка 3D графических элементов |  | 2w | 2022-03-01 09:00 A | 2022-03-16 12:00 A | 4SS | 100% |  | 2022-03-01 09:00 | 2022-03-16 12:00 | 2w |  |  | 3D аниматор | 80h | 80h | 710 | 710 | 710 |
| 6 | 2.1.3 | Создание заставки |  | 3w | 2022-03-16 12:00 A | 2022-04-06 16:00 A | 5 | 100% |  | 2022-03-16 12:00 | 2022-04-06 16:00 | 3w |  |  | 3D аниматор | 120h | 120h | 1,030 | 1,030 | 1,030 |
| 7 | 2.2 | Разработка дизайна руководства |  | 1w | 2022-03-23 10:11 | 2022-03-30 17:41 |  |  |  | 2022-05-26 14:12 | 2022-06-02 15:12 | 1w | -34.15d | 0d | Художник-дизайнер | 40h |  | 390 | 390 |  |
| 8 | 2.3 | Разработка дизайна сайта |  | 2.47w | 2022-03-28 10:11 | 2022-04-13 15:00 | 16 |  |  | 2022-05-31 14:12 | 2022-06-09 16:12 | 1.4w | 21.89d | 12.88d | 3D аниматор; Web-дизайнер; Художник-дизайнер | 120h |  | 1,110 | 1,110 |  |
| 9 | 3 | **Программирование** |  | 59.78d | 2022-03-11 16:00 A | 2022-06-09 14:12 |  | 61% | 23.12d | 2022-03-11 16:00 | 2022-07-13 11:49 | 82.6d | 22.83d |  | Сервер | 4238.21h | 2980.18h | 22,157.28 | 15,573.64 | 15,543.35 |
| 10 | 3.1 | Программирование средств обработки базы объектов |  | 2.47w | 2022-03-28 09:00 A | 2022-04-13 11:49 A | 17 | 100% |  | 2022-03-28 09:00 | 2022-04-13 11:49 | 2.47w |  |  | Программист №3; Программист №4; Программист №1; Программист №2 | 240h | 240h | 1,880 | 1,880 | 1,880 |
| 11 | 3.2 | Программирование интерфейса |  | 1.5w | 2022-05-11 09:00 | 2022-05-20 13:00 | 3, 14 |  |  | 2022-05-31 09:12 | 2022-06-09 14:12 | 1.5w | -38.5d | 0d | Программист №3; Программист №4; Программист №1; Программист №2 | 240h |  | 1,880 | 1,880 |  |
| 12 | 3.3 | Создание модели ядра |  | 2.02w | 2022-03-11 16:00 A | 2022-03-25 16:49 A | 15 | 100% |  | 2022-03-11 16:00 | 2022-03-25 16:49 | 2.02w |  |  | Ведущий программист; Программист №1; Программист №2; Программист №3; Программист №4 | 400h | 400h | 3,336.46 | 3,336.46 | 3,336.46 |
| 13 | 3.4 | Создание рабочей версии ядра |  | 8.84w | 2022-04-01 16:49 A | 2022-06-09 14:12 | 24 | 52% | 4.24w | 2022-04-01 16:49 | 2022-05-31 09:12 | 7.41w | 22.83d |  | Ведущий программист; Программист №1; Программист №2; Программист №3; Программист №4 | 1200h | 797.36h | 9,412.16 | 9,412.16 | 6,422.1 |
| 14 | 4 | **Проектирование** |  | 18.15d | 2022-03-01 09:00 A | 2022-03-28 10:11 |  | 95% | 0.98d | 2022-03-01 09:00 | 2022-05-31 09:12 | 60.03d | -0.15d | 0d |  | 328h | 320h | 6,146 | 17,218.62 | 5,990 |
| 15 | 4.1 | Анализ и проектирование ядра |  | 1.5w | 2022-03-01 09:00 A | 2022-03-11 16:00 A |  | 100% |  | 2022-03-01 09:00 | 2022-03-11 16:00 | 1.5w |  |  | Ведущий программист; Системный аналитик; Программист №1; Программист №2 | 240h | 240h | 3,140 | 3,140 | 3,140 |
| 16 | 4.2 | Разработка структуры сайта |  | 1d | 2022-03-25 10:11 | 2022-03-28 10:11 | 27SS |  |  | 2022-05-30 14:12 | 2022-05-31 14:12 | 1d | -34.15d | 0d | Web-дизайнер | 8h |  | 106 | 106 |  |
| 17 | 4.3 | Анализ и построение структуры базы объектов |  | 2w | 2022-03-11 16:00 A | 2022-03-25 18:00 A |  | 100% |  | 2022-03-11 16:00 | 2022-03-25 18:00 | 2w |  |  | Системный аналитик | 80h | 80h | 1,900 | 1,900 | 1,900 |
| 18 | 5 | **Работа с данными** |  | 85.35d | 2022-03-09 09:00 A | 2022-07-13 11:49 | 11FS-10d | 19% | 69.38d | 2022-05-26 14:12 | 2022-06-21 17:12 | 17.38d | 0d |  |  | 2784h | 657.91h | 6,552 | 1,010 | 1,417.82 |
| 19 | 5.1 | Наполнение базы объектов |  | 12w | 2022-04-13 11:49 A | 2022-07-13 11:49 | 10 | 26% | 8.87w | 2022-04-13 11:49 | 2022-07-13 11:49 | 12w | 0d |  | Наборщик данных №1; Наборщик данных №2; Наборщик данных №3; Наборщик данных №4; Наборщик данных №5 | 2400h | 625.91h | 4,850 | 4,850 | 1,301.82 |
| 20 | 5.2 | Создание мультимедиа-наполнения |  | 6w | 2022-03-09 09:00 A | 2022-06-23 11:00 | 3 | 13% | 5.2w | 2022-04-06 16:00 | 2022-05-25 15:00 | 6w | 14.1d |  | Мультимедиа-корреспондент | 264h | 32h | 812 | 740 | 116 |
| 21 | 5.3 | Наполнение сайта |  | 3w | 2022-05-04 14:00 | 2022-05-27 17:00 | 8 |  |  | 2022-06-09 16:12 | 2022-07-04 10:12 | 3w | 9.01d | 0d | Web-дизайнер | 120h |  | 890 | 890 |  |
| 22 | 6 | **Тестирование** |  | 64.49d | 2022-03-25 16:49 A | 2022-07-01 11:43 |  | 20% | 51.42d | 2022-05-30 14:12 | 2022-07-18 11:41 | 33.81d | 8.01d |  |  | 520h | 40h | 3,890 | 5,666 | 330 |
| 23 | 6.1 | Тестирование сайта |  | 3.93w | 2022-06-02 15:23 | 2022-07-01 11:43 | 21FS-1w |  |  | 2022-06-27 10:12 | 2022-07-18 11:41 | 3.04w | 8.01d | 0d | Программист №1; Программист №2; Программист №3; Программист №4 | 480h |  | 3,560 | 3,560 |  |
| 24 | 6.2 | Тестирование модели ядра |  | 1w | 2022-03-25 16:49 A | 2022-04-01 16:49 A | 12 | 100% |  | 2022-03-25 16:49 | 2022-04-01 16:49 | 1w |  |  | Программист №1 | 40h | 40h | 330 | 330 | 330 |

| ID | WBS | Task | Type | Duration | Start | Finish | Predecessors | Complete | Remaining | Baseline start | Baseline finish | Baseline duration | Total slack | Free slack | Constraint | Resources | Work | Actual work | Cost | Baseline cost | Actual cost |
| --- | --- | --- | --- | --- | --- | --- | --- | --- | --- | --- | --- | --- | --- | --- | --- | --- | --- | --- | --- | --- | --- |
| 25 | 7 | **Работа с документацией** |  | 46.35d | 2022-03-25 10:11 | 2022-06-03 13:00 |  |  |  |  |  |  | -34.15d | 0d |  |  | 200h |  | 1,040 |  |  |
| 26 | 7.1 | Создание справочной системы |  | 2w | 2022-05-20 14:00 | 2022-06-03 13:00 | 11 |  |  | 2022-06-21 17:12 | 2022-07-06 11:12 | 2w | 26.85d |  |  | Технический писатель | 80h |  | 420 | 420 |  |
| 27 | 7.2 | Написание руководства пользователя |  | 3w | 2022-03-25 10:11 | 2022-04-15 11:11 | 7SS+2d |  |  | 2022-05-30 14:12 | 2022-06-21 17:12 | 3w | -34.15d | 0d |  | Технический писатель | 120h |  | 620 | 620 |  |
| 28 | 8 | Сдача в эксплуатацию | milestone | 0d | 2022-07-01 11:43 | 2022-07-01 11:43 | 23 |  |  | 2022-07-18 11:41 | 2022-07-18 11:41 | 0d | 8.01d | 41.92d |  |  |  |  |  |  |  |
| 29 | 9 | **Совещание** |  | 19.12d | 2022-03-02 09:00 A | 2022-03-30 10:00 A |  | 100% |  | 2022-03-02 09:00 | 2022-07-20 10:00 | 94.12d |  |  |  |  | 35h | 35h | 305 | 1,281 | 305 |
| 30 | 9.1 | Совещание 1 | manual | 1h | 2022-03-02 09:00 A | 2022-03-02 10:00 A |  | 100% |  | 2022-03-02 09:00 | 2022-03-02 10:00 | 1h |  |  | start no earlier than 2022-03-02 09:00 | 3D аниматор; Ведущий программист; Web-дизайнер; Мультимедиа-корреспондент; Системный аналитик; Художник-дизайнер; Технический писатель | 7h | 7h | 61 | 61 | 61 |
| 31 | 9.2 | Совещание 2 | manual | 1h | 2022-03-09 09:00 A | 2022-03-09 10:00 A |  | 100% |  | 2022-03-09 09:00 | 2022-03-09 10:00 | 1h |  |  | start no earlier than 2022-03-09 09:00 | 3D аниматор; Ведущий программист; Web-дизайнер; Мультимедиа-корреспондент; Системный аналитик; Художник-дизайнер; Технический писатель | 7h | 7h | 61 | 61 | 61 |
| 32 | 9.3 | Совещание 3 | manual | 1h | 2022-03-16 09:00 A | 2022-03-16 10:00 A |  | 100% |  | 2022-03-16 09:00 | 2022-03-16 10:00 | 1h |  |  | start no earlier than 2022-03-16 09:00 | 3D аниматор; Ведущий программист; Web-дизайнер; Мультимедиа-корреспондент; Системный аналитик; Художник-дизайнер; Технический писатель | 7h | 7h | 61 | 61 | 61 |
| 33 | 9.4 | Совещание 4 | manual | 1h | 2022-03-23 09:00 A | 2022-03-23 10:00 A |  | 100% |  | 2022-03-23 09:00 | 2022-03-23 10:00 | 1h |  |  | start no earlier than 2022-03-23 09:00 | 3D аниматор; Ведущий программист; Web-дизайнер; Мультимедиа-корреспондент; Системный аналитик; Художник-дизайнер; Технический писатель | 7h | 7h | 61 | 61 | 61 |
| 34 | 9.5 | Совещание 5 | manual | 1h | 2022-03-30 09:00 A | 2022-03-30 10:00 A |  | 100% |  | 2022-03-30 09:00 | 2022-03-30 10:00 | 1h |  |  | start no earlier than 2022-03-30 09:00 | 3D аниматор; Ведущий программист; Web-дизайнер; Мультимедиа-корреспондент; Системный аналитик; Художник-дизайнер; Технический писатель | 7h | 7h | 61 | 61 | 61 |
| 35 | 10 | **Презентация** |  | 65.25d | 2022-04-04 09:00 A | 2022-07-11 11:00 |  | 43% | 37.29d |  |  |  | 0d |  |  |  | 56h | 24h | 1,984 |  | 848 |
| 36 | 10.1 | Презентация 1 | manual | 2h | 2022-04-04 09:00 A | 2022-04-04 11:00 A |  | 100% |  |  |  |  |  |  | start no earlier than 2022-04-04 09:00 | Web-дизайнер; Ведущий программист; Мультимедиа-корреспондент; Системный аналитик | 8h | 8h | 280 |  | 280 |
| 37 | 10.2 | Презентация 2 | manual | 2h | 2022-04-18 09:00 A | 2022-04-18 11:00 A |  | 100% |  |  |  |  |  |  | start no earlier than 2022-04-18 09:00 | Web-дизайнер; Ведущий программист; Мультимедиа-корреспондент; Системный аналитик | 8h | 8h | 284 |  | 284 |
| 38 | 10.3 | Презентация 3 | manual | 2h | 2022-05-02 09:00 A | 2022-05-02 11:00 A |  | 100% |  |  |  |  |  |  | start no earlier than 2022-05-02 09:00 | Web-дизайнер; Ведущий программист; Мультимедиа-корреспондент; Системный аналитик | 8h | 8h | 284 |  | 284 |
| 39 | 10.4 | Презентация 4 | manual | 2h | 2022-05-16 09:00 | 2022-05-16 11:00 |  |  |  |  |  |  |  |  | start no earlier than 2022-05-16 09:00 | Web-дизайнер; Ведущий программист; Мультимедиа-корреспондент; Системный аналитик | 8h |  | 284 |  |  |
| 40 | 10.5 | Презентация 5 | manual | 2h | 2022-05-30 09:00 | 2022-05-30 11:00 |  |  |  |  |  |  |  |  | start no earlier than 2022-05-30 09:00 | Web-дизайнер; Ведущий программист; Мультимедиа-корреспондент; Системный аналитик | 8h |  | 284 |  |  |
| 41 | 10.6 | Презентация 7 | manual | 2h | 2022-06-27 09:00 | 2022-06-27 11:00 |  |  |  |  |  |  |  |  | start no earlier than 2022-06-27 09:00 | Web-дизайнер; Ведущий программист; Мультимедиа-корреспондент; Системный аналитик | 8h |  | 284 |  |  |
| 42 | 10.7 | Презентация 8 | manual | 2h | 2022-07-11 09:00 | 2022-07-11 11:00 |  |  |  |  |  |  |  |  | start no earlier than 2022-07-11 09:00 | Web-дизайнер; Ведущий программист; Мультимедиа-корреспондент; Системный аналитик | 8h |  | 284 |  |  |
